# X

Schedule from ProjectLibre, 2024-09-09 to 2024-11-26.

## Calendars

- Padrão: Mon-Fri 08:00-12:00, 13:00-17:00; Sat-Sun off.

## Resources

| Resource |
| --- |
| Não atribuído |

## Schedule

| ID | WBS | Task | Duration | Start | Finish | Predecessors | Complete | Baseline start | Baseline finish |
| --- | --- | --- | --- | --- | --- | --- | --- | --- | --- |
| 1 | 1 | **ProjetoIZZY** | 56.27d? | 2024-09-09 | 2024-11-26 |  | 26% | 2024-09-09 | 2024-11-22 |
| 2 | 1.1 | **Prospecção** | 1.25d? | 2024-09-09 | 2024-09-10 |  | 100% | 2024-09-09 | 2024-09-10 |
| 3 | 1.1.1 | **PTEC** | 1.25d? | 2024-09-09 | 2024-09-10 |  | 100% | 2024-09-09 | 2024-09-10 |
| 4 | 1.1.1.1 | Estudar o domínio de aplicaçao do sistema | 1.25d | 2024-09-09 | 2024-09-10 |  | 100% | 2024-09-09 | 2024-09-10 |
| 5 | 1.1.1.2 | Redigir PTE | 1.25d? | 2024-09-09 | 2024-09-10 | 4 | 100% | 2024-09-09 | 2024-09-10 |
| 6 | 1.1.1.3 | Revisar PTE | 0.25d? | 2024-09-09 | 2024-09-09 | 5 | 100% | 2024-09-09 | 2024-09-09 |
| 7 | 1.1.2 | **Est. Prel. Tam** | 1d? | 2024-09-09 | 2024-09-09 |  | 100% | 2024-09-09 | 2024-09-09 |
| 8 | 1.1.2.1 | Estimar Tamanho do Projeto | 1d? | 2024-09-09 | 2024-09-09 | 4 | 100% | 2024-09-09 | 2024-09-09 |
| 9 | 1.1.2.2 | Revisar Estimar Tamanho do Projeto | 0.25d? | 2024-09-09 | 2024-09-09 | 8 | 100% | 2024-09-09 | 2024-09-09 |
| 10 | 1.2 | **Análise** | 12.12d? | 2024-09-10 | 2024-09-26 |  | 100% | 2024-09-10 | 2024-09-26 |
| 11 | 1.2.1 | **DRE** | 6d | 2024-09-10 | 2024-09-18 |  | 100% | 2024-09-10 | 2024-09-18 |
| 12 | 1.2.1.1 | Levantar Requisitos do Sistema | 2.5d | 2024-09-10 | 2024-09-12 | 6 | 100% | 2024-09-10 | 2024-09-12 |
| 13 | 1.2.1.2 | Redigir DRE | 2.75d | 2024-09-12 | 2024-09-17 | 12 | 100% | 2024-09-12 | 2024-09-17 |
| 14 | 1.2.1.3 | Revisar DRE | 0.75d | 2024-09-17 | 2024-09-18 | 13 | 100% | 2024-09-17 | 2024-09-18 |
| 15 | 1.2.2 | **MRB** | 6.12d? | 2024-09-18 | 2024-09-26 |  | 100% | 2024-09-18 | 2024-09-26 |
| 16 | 1.2.2.1 | Elaborar MRB | 5.62d? | 2024-09-18 | 2024-09-25 | 14 | 100% | 2024-09-18 | 2024-09-25 |
| 17 | 1.2.2.2 | Revisar MRB | 0.5d? | 2024-09-25 | 2024-09-26 | 16 | 100% | 2024-09-25 | 2024-09-26 |
| 18 | 1.3 | **Planejamento** | 7.88d? | 2024-09-18 | 2024-09-30 |  | 58% | 2024-09-18 | 2024-09-26 |
| 19 | 1.3.1 | Desenvolver Plano de Projeto | 0.25d? | 2024-09-18 | 2024-09-18 | 14 | 100% | 2024-09-18 | 2024-09-18 |
| 20 | 1.3.2 | Elaborar Estimativa de Tamanho/Esforço | 0.25d? | 2024-09-18 | 2024-09-18 | 14 | 100% | 2024-09-18 | 2024-09-18 |
| 21 | 1.3.3 | Revisar Est. de Tamanho/Esforço | 0.12d? | 2024-09-18 | 2024-09-18 | 20 | 100% | 2024-09-18 | 2024-09-18 |
| 22 | 1.3.4 | Elaborar Cronograma | 1d? | 2024-09-18 | 2024-09-19 | 19 | 100% | 2024-09-18 | 2024-09-19 |
| 23 | 1.3.5 | Revisar Cronograma | 0.12d? | 2024-09-19 | 2024-09-19 | 22 | 100% | 2024-09-19 | 2024-09-19 |
| 24 | 1.3.6 | Elaborar Protótipo | 7.75d? | 2024-09-18 | 2024-09-27 | 14 | 50% | 2024-09-18 | 2024-09-26 |
| 25 | 1.3.7 | Revisar Protótipo | 0.12d? | 2024-09-30 | 2024-09-30 | 24 |  | 2024-09-26 | 2024-09-26 |

| ID | WBS | Task | Duration | Start | Finish | Predecessors | Baseline start | Baseline finish |
| --- | --- | --- | --- | --- | --- | --- | --- | --- |
| 26 | 1.4 | **Desenvolvimento** | 33.15d? | 2024-09-30 | 2024-11-14 |  | 2024-09-26 | 2024-11-12 |
| 27 | 1.4.1 | **Sprint 1** | 14.6d? | 2024-09-30 | 2024-10-18 |  | 2024-09-26 | 2024-10-17 |
| 28 | 1.4.1.1 | **Implementação** | 13.5d? | 2024-09-30 | 2024-10-17 |  | 2024-09-26 | 2024-10-16 |
| 29 | 1.4.1.1.1 | Manter Usuários | 5d? | 2024-09-30 | 2024-10-07 | 25 | 2024-09-26 | 2024-10-03 |
| 30 | 1.4.1.1.2 | Realizar Testes | 1d | 2024-10-07 | 2024-10-08 | 29 | 2024-10-03 | 2024-10-04 |
| 31 | 1.4.1.1.3 | Manter IZZY's | 6.25d? | 2024-10-08 | 2024-10-16 | 30 | 2024-10-04 | 2024-10-14 |
| 32 | 1.4.1.1.4 | Realizar Testes | 1.25d? | 2024-10-16 | 2024-10-17 | 31 | 2024-10-14 | 2024-10-16 |
| 33 | 1.4.1.2 | **Monitoramento e Controle** | 1d? | 2024-10-17 | 2024-10-18 |  | 2024-10-16 | 2024-10-17 |
| 34 | 1.4.1.2.1 | Status Report | 1d? | 2024-10-17 | 2024-10-18 | 32 | 2024-10-16 | 2024-10-17 |
| 35 | 1.4.1.2.2 | Atualizar Cronograma | 1d? | 2024-10-17 | 2024-10-18 | 32 | 2024-10-16 | 2024-10-17 |
| 36 | 1.4.1.3 | **Gerência de Configuração** | 0.1d? | 2024-10-18 | 2024-10-18 |  | 2024-10-17 | 2024-10-17 |
| 37 | 1.4.1.3.1 | Gerar nova Tag de Configuração | 0.1d? | 2024-10-18 | 2024-10-18 | 35, 34 | 2024-10-17 | 2024-10-17 |
| 38 | 1.4.2 | **Sprint 2** | 11.85d? | 2024-10-18 | 2024-11-05 |  | 2024-10-17 | 2024-11-04 |
| 39 | 1.4.2.1 | **Implementação** | 9.75d? | 2024-10-18 | 2024-11-01 |  | 2024-10-17 | 2024-10-30 |
| 40 | 1.4.2.1.1 | Manter Membros de um IZZY | 6.25d | 2024-10-18 | 2024-10-28 | 37 | 2024-10-17 | 2024-10-25 |
| 41 | 1.4.2.1.2 | Realizar Testes | 1.25d? | 2024-10-28 | 2024-10-30 | 40 | 2024-10-25 | 2024-10-28 |
| 42 | 1.4.2.1.3 | Manter Atividades | 8.12d? | 2024-10-18 | 2024-10-30 | 37 | 2024-10-17 | 2024-10-29 |
| 43 | 1.4.2.1.4 | Realizar Testes | 1.62d? | 2024-10-30 | 2024-11-01 | 42 | 2024-10-29 | 2024-10-30 |
| 44 | 1.4.2.2 | **Monitoramento de Controle** | 2d? | 2024-11-01 | 2024-11-05 |  | 2024-10-30 | 2024-11-01 |
| 45 | 1.4.2.2.1 | Status Report | 1d? | 2024-11-01 | 2024-11-04 | 43 | 2024-10-30 | 2024-10-31 |
| 46 | 1.4.2.2.2 | Atualizar Cronograma | 1d? | 2024-11-04 | 2024-11-05 | 45 | 2024-10-31 | 2024-11-01 |
| 47 | 1.4.2.3 | **Gerência de Configuração** | 0.1d | 2024-11-05 | 2024-11-05 |  | 2024-11-01 | 2024-11-04 |
| 48 | 1.4.2.3.1 | Gerar nova Tag de Configuração | 0.1d | 2024-11-05 | 2024-11-05 | 46, 45 | 2024-11-01 | 2024-11-04 |
| 49 | 1.4.3 | **Sprint 3** | 3d? | 2024-11-05 | 2024-11-08 |  | 2024-11-04 | 2024-11-07 |
| 50 | 1.4.3.1 | **Implementação** | 3d? | 2024-11-05 | 2024-11-08 |  | 2024-11-04 | 2024-11-07 |
| 51 | 1.4.3.1.1 | Manter Fotos | 2.5d | 2024-11-05 | 2024-11-08 | 48 | 2024-11-04 | 2024-11-06 |
| 52 | 1.4.3.1.2 | Realizar Testes | 0.5d? | 2024-11-08 | 2024-11-08 | 51 | 2024-11-06 | 2024-11-07 |
| 53 | 1.4.3.1.3 | Relatório de Atividades | 1.25d? | 2024-11-05 | 2024-11-06 | 48 | 2024-11-04 | 2024-11-05 |
| 54 | 1.4.3.1.4 | Realizar Testes | 0.25d? | 2024-11-06 | 2024-11-07 | 53 | 2024-11-05 | 2024-11-05 |

| ID | WBS | Task | Duration | Start | Finish | Predecessors | Baseline start | Baseline finish | Constraint |
| --- | --- | --- | --- | --- | --- | --- | --- | --- | --- |
| 55 | 1.4.3.2 | **Monitoramento de Controle** | 1d? | 2024-11-07 | 2024-11-08 |  | 2024-11-05 | 2024-11-06 |  |
| 56 | 1.4.3.2.1 | Status Report | 1d? | 2024-11-07 | 2024-11-08 | 54 | 2024-11-05 | 2024-11-06 |  |
| 57 | 1.4.3.2.2 | Atualizar Cronograma | 1d? | 2024-11-07 | 2024-11-08 | 54 | 2024-11-05 | 2024-11-06 |  |
| 58 | 1.4.3.3 | **Gerência de Configuração** | 0.1d | 2024-11-08 | 2024-11-08 |  | 2024-11-06 | 2024-11-06 |  |
| 59 | 1.4.3.3.1 | Gerar nova Tag de Configuração | 0.1d | 2024-11-08 | 2024-11-08 | 56, 57 | 2024-11-06 | 2024-11-06 |  |
| 60 | 1.4.4 | **Sprint 4** | 4.1d? | 2024-11-08 | 2024-11-14 |  | 2024-11-06 | 2024-11-12 |  |
| 61 | 1.4.4.1 | **Implementação** | 3d? | 2024-11-08 | 2024-11-13 |  | 2024-11-06 | 2024-11-11 |  |
| 62 | 1.4.4.1.1 | Relatório de Atividades Atrasadas | 1.88d | 2024-11-08 | 2024-11-12 | 59 | 2024-11-06 | 2024-11-08 |  |
| 63 | 1.4.4.1.2 | Realizar Testes | 0.38d | 2024-11-12 | 2024-11-12 | 62 | 2024-11-08 | 2024-11-08 |  |
| 64 | 1.4.4.1.3 | Relatório de Participação dos Membros | 2.5d? | 2024-11-08 | 2024-11-12 | 59 | 2024-11-06 | 2024-11-11 |  |
| 65 | 1.4.4.1.4 | Realizar Testes | 0.5d? | 2024-11-12 | 2024-11-13 | 64 | 2024-11-11 | 2024-11-11 |  |
| 66 | 1.4.4.2 | **Monitoramento de Controle** | 1d? | 2024-11-13 | 2024-11-14 |  | 2024-11-11 | 2024-11-12 |  |
| 67 | 1.4.4.2.1 | Status Report | 1d? | 2024-11-13 | 2024-11-14 | 65 | 2024-11-11 | 2024-11-12 |  |
| 68 | 1.4.4.2.2 | Atualizar Cronograma | 1d? | 2024-11-13 | 2024-11-14 | 65 | 2024-11-11 | 2024-11-12 |  |
| 69 | 1.4.4.3 | **Gerência de Configuração** | 0.1d | 2024-11-14 | 2024-11-14 |  | 2024-11-12 | 2024-11-12 |  |
| 70 | 1.4.4.3.1 | Gerar nova Tag de Configuração | 0.1d | 2024-11-14 | 2024-11-14 | 67, 68 | 2024-11-12 | 2024-11-12 |  |
| 71 | 1.5 | **Fechamento** | 8d? | 2024-11-14 | 2024-11-26 |  | 2024-11-12 | 2024-11-22 |  |
| 72 | 1.5.1 | Apresentação do projeto ao cliente | 2d? | 2024-11-14 | 2024-11-18 | 70 | 2024-11-12 | 2024-11-14 |  |
| 73 | 1.5.2 | Entrega do projeto ao cliente | 2d? | 2024-11-18 | 2024-11-20 | 72 | 2024-11-14 | 2024-11-18 |  |
| 74 | 1.5.3 | Implantação do sistema | 4d? | 2024-11-20 | 2024-11-26 | 73 | 2024-11-18 | 2024-11-22 |  |
| 75 | 2 | Finalização | 0d? | 2024-11-26 | 2024-11-26 | 74 | 2024-11-22 | 2024-11-22 | start no earlier than 2024-09-09 |
